# DSE13 Gantt

How a schedule from MS Project changed from version to version. A marks actual dates.

## Version 1 (saved 2025-04-26)

Note of the change: added gantt chart file

| ID | WBS | Task | Duration | Start | Finish | Predecessors | Complete | Total float | Constraint |
| --- | --- | --- | --- | --- | --- | --- | --- | --- | --- |
| 1 |  | Project Kickoff | 0d | 2025-04-22 08:00 A | 2025-04-22 08:00 A |  | 100% |  |  |
| 2 | 1 | **Project Foundation** | 4.5d | 2025-04-22 08:00 | 2025-04-28 12:00 | 1SS |  | 22.25d |  |
| 3 | 1.1 | **Familiarization** | 0.25d | 2025-04-22 08:00 | 2025-04-22 10:00 |  |  | 22.25d |  |
| 4 | 1.1.1 | **Read the Project Guide** | 0.12d | 2025-04-22 08:00 | 2025-04-22 09:00 |  |  | 22.25d |  |
| 5 |  | Define MNS | 1h | 2025-04-22 08:00 | 2025-04-22 09:00 |  |  | 22.25d |  |
| 6 |  | Define POS | 1h | 2025-04-22 08:00 | 2025-04-22 09:00 |  |  | 22.25d |  |
| 7 |  | Discuss Mission with Supervisors | 1h | 2025-04-22 09:00 | 2025-04-22 10:00 | 4, 8 |  | 22.25d |  |
| 8 |  | Read Paper on X-zyLo | 1h | 2025-04-22 08:00 | 2025-04-22 09:00 |  |  | 22.25d |  |
| 9 | 1.2 | **Define Organizational Structure** | 0.5d | 2025-04-22 10:00 | 2025-04-22 15:00 | 3 |  | 22.25d |  |
| 10 |  | Discuss Expectations | 1h | 2025-04-22 10:00 | 2025-04-22 11:00 | 3 |  | 22.25d |  |
| 11 |  | Define Team Rules | 1h | 2025-04-22 11:00 | 2025-04-22 12:00 | 10 |  | 22.25d | start no earlier than 2025-04-22 09:00 |
| 12 | 1.2.3 | **Construct Organogram** | 0.25d | 2025-04-22 13:00 | 2025-04-22 15:00 | 11 |  | 22.25d |  |
| 13 |  | Define Team Roles | 1h | 2025-04-22 13:00 | 2025-04-22 14:00 |  |  | 22.25d |  |
| 14 |  | Assign Team Roles | 1h | 2025-04-22 14:00 | 2025-04-22 15:00 | 13 |  | 22.25d |  |
| 15 | 1.3 | **Define the Planning** | 2.25d | 2025-04-22 15:00 | 2025-04-24 17:00 | 9 |  | 22.25d |  |
| 16 |  | Create Overview of the Phases | 1h | 2025-04-22 15:00 | 2025-04-22 16:00 |  |  | 22.25d |  |
| 17 |  | Create Workflow Diagram | 6h | 2025-04-22 16:00 | 2025-04-23 14:00 | 16 |  | 22.25d |  |
| 18 |  | Create Work Breakdown Structure | 4h | 2025-04-23 14:00 | 2025-04-24 09:00 | 17 |  | 22.25d |  |
| 19 | 1.3.4 | **Create Gantt Chart** | 0.88d | 2025-04-24 09:00 | 2025-04-24 17:00 | 18 |  | 22.25d |  |
| 20 |  | Define Work Packages | 4h | 2025-04-24 09:00 | 2025-04-24 14:00 |  |  | 22.25d |  |
| 21 |  | Create Time Frames | 2h | 2025-04-24 14:00 | 2025-04-24 16:00 | 20 |  | 22.25d |  |
| 22 |  | Assign Work Packages | 1h | 2025-04-24 16:00 | 2025-04-24 17:00 | 21 |  | 22.25d |  |
| 23 | 1.5 | **Project Plan** | 1.5d | 2025-04-25 08:00 | 2025-04-28 12:00 | 15, 28 |  | 22.25d |  |
| 24 |  | Draft Project Plan | 8h | 2025-04-25 08:00 | 2025-04-25 17:00 |  |  | 22.25d |  |
| 25 |  | Review Project Plan | 2h | 2025-04-28 08:00 | 2025-04-28 10:00 | 24 |  | 22.25d |  |
| 26 |  | Implement Feedback | 1h | 2025-04-28 10:00 | 2025-04-28 11:00 | 25 |  | 22.25d |  |
| 27 |  | Create Personal Appendix | 1h | 2025-04-28 11:00 | 2025-04-28 12:00 | 26 |  | 22.25d |  |
| 28 | 1.4 | **Define Risk and Sustainability** | 0.25d | 2025-04-22 15:00 | 2025-04-22 17:00 | 15SS |  | 24.25d |  |
| 29 |  | Perform SWOT Analysis | 0.5h | 2025-04-22 15:00 | 2025-04-22 15:30 |  |  | 24.25d |  |
| 30 |  | Make Risk Mitigation Plan | 1h | 2025-04-22 15:30 | 2025-04-22 16:30 | 29 |  | 24.25d |  |
| 31 | 1.4.3 | **Make a Sustainable Approach Plan** | 0.06d | 2025-04-22 16:30 | 2025-04-22 17:00 | 30 |  | 24.25d |  |
| 32 |  | Create Risk Heat Map on Sustainability | 0.2h | 2025-04-22 16:30 | 2025-04-22 16:42 |  |  | 24.25d |  |
| 33 |  | Define Project Contribution to Sustainability | 0.3h | 2025-04-22 16:42 | 2025-04-22 17:00 | 32 |  | 24.25d |  |
| 34 | 3 | **Preliminary Design & Trade-Off** | 9.56d | 2025-05-01 13:30 | 2025-05-15 09:00 | 163 |  | 22.25d |  |
| 35 | 3.1 | **Size System** | 2.5d | 2025-05-01 13:30 | 2025-05-06 08:30 |  |  | 22.25d |  |
| 36 | 3.1.1 | **Perform Weight Estimation** | 0.62d | 2025-05-01 13:30 | 2025-05-02 09:30 |  |  | 22.88d |  |
| 37 |  | Create Mass Budget | 5h | 2025-05-01 13:30 | 2025-05-02 09:30 |  |  | 22.88d |  |
| 38 | 3.1.2 | **Size Drone** | 1.25d | 2025-05-02 09:30 | 2025-05-05 11:30 | 36 |  | 22.88d |  |
| 39 |  | Size Wing and Gyroscope | 5h | 2025-05-02 09:30 | 2025-05-02 15:30 |  |  | 22.88d |  |
| 40 |  | Create Drag Estimation | 2h | 2025-05-02 15:30 | 2025-05-05 08:30 | 39 |  | 22.88d |  |
| 41 |  | Size Propulsion System | 3h | 2025-05-05 08:30 | 2025-05-05 11:30 | 40 |  | 22.88d |  |
| 42 | 3.1.3 | **Extend Simulation** | 2.5d | 2025-05-01 13:30 | 2025-05-06 08:30 | 36SS |  | 22.25d |  |
| 43 |  | Implement Propulsion & Actuators | 10h | 2025-05-01 13:30 | 2025-05-02 15:30 |  |  | 22.25d |  |
| 44 |  | Implement Control Capability | 10h | 2025-05-02 15:30 | 2025-05-06 08:30 | 43 |  | 22.25d |  |
| 45 | 3.2 | **Perform Preliminary Subsystem Design** | 4.81d | 2025-05-06 08:30 | 2025-05-12 16:00 | 35 |  | 22.25d |  |
| 46 |  | Make N2 Chart | 2h | 2025-05-06 08:30 | 2025-05-06 10:30 |  |  | 22.25d |  |
| 47 | 3.2.2 | **Perform Aerodynamic Design** | 1.88d | 2025-05-06 10:30 | 2025-05-08 09:30 | 46 |  | 22.25d |  |
| 48 |  | Generate Structure Mesh | 4h | 2025-05-06 10:30 | 2025-05-06 15:30 |  |  | 22.25d |  |
| 49 |  | Perform CFD Analysis | 10h | 2025-05-06 15:30 | 2025-05-08 08:30 | 48 |  | 22.25d |  |
| 50 |  | Export Lift, Drag, Moment | 1h | 2025-05-08 08:30 | 2025-05-08 09:30 | 49 |  | 22.25d |  |
| 51 | 3.2.3 | **Perform Control & Stability Design** | 2.06d | 2025-05-08 09:30 | 2025-05-12 10:00 | 47SS |  | 22.25d |  |
| 52 |  | Run Dynamic Simulation | 2.5h | 2025-05-08 09:30 | 2025-05-08 12:00 | 50 |  | 22.25d |  |
| 53 |  | Size Actuators | 10h | 2025-05-08 13:00 | 2025-05-09 15:00 | 52 |  | 22.25d |  |
| 54 |  | Size Electronics & Sensors | 4h | 2025-05-09 15:00 | 2025-05-12 10:00 | 53 |  | 22.25d |  |
| 55 | 3.2.4 | **Perform Power & Propulsion Design** | 3.75d | 2025-05-06 10:30 | 2025-05-12 08:30 | 47SS |  | 22.44d |  |
| 56 |  | Size Propulsion | 2.5h | 2025-05-06 10:30 | 2025-05-06 14:00 |  |  | 24.31d |  |
| 57 |  | Size Actuators | 10h | 2025-05-08 13:00 | 2025-05-09 15:00 | 52, 56 |  | 22.44d |  |
| 58 |  | Size Battery | 2.5h | 2025-05-09 15:00 | 2025-05-12 08:30 | 57, 53 |  | 22.44d |  |
| 59 | 3.2.5 | **Perform Structures & Materials Design** | 0.62d | 2025-05-06 10:30 | 2025-05-06 16:30 | 47SS |  | 25.56d |  |
| 60 |  | Design Structure | 5h | 2025-05-06 10:30 | 2025-05-06 16:30 |  |  | 25.56d |  |
| 61 |  | Select Material | 1.5h | 2025-05-06 10:30 | 2025-05-06 12:00 | 60SS |  | 26d |  |
| 62 |  | Evaluate Requirement Compliance | 5h | 2025-05-12 10:00 | 2025-05-12 16:00 | 51, 47, 55, 59 |  | 22.25d |  |
| 63 | 3.3 | **Trade-Off** | 2.25d | 2025-05-12 16:00 | 2025-05-15 09:00 | 45 |  | 22.25d |  |
| 64 | 3.3.1 | **Perform Trade-Off** | 0.25d | 2025-05-12 16:00 | 2025-05-13 09:00 |  |  | 22.5d |  |
| 65 |  | Determine Selection Criteria & Weights | 2h | 2025-05-12 16:00 | 2025-05-13 09:00 |  |  | 22.5d |  |
| 66 |  | Graphical Trade-Off Tables | 2h | 2025-05-12 16:00 | 2025-05-13 09:00 | 65SS |  | 22.5d |  |
| 67 | 3.3.2 | **Extend Risk Analysis** | 0.5d | 2025-05-12 16:00 | 2025-05-13 11:00 | 64SS |  | 22.25d |  |
| 68 |  | Update Risk Map | 2h | 2025-05-12 16:00 | 2025-05-13 09:00 |  |  | 22.25d |  |
| 69 |  | Assess Concept Risk | 2h | 2025-05-13 09:00 | 2025-05-13 11:00 | 68 |  | 22.25d |  |
| 70 | 3.3.3 | **Draft Midterm Report** | 1.25d | 2025-05-13 11:00 | 2025-05-14 14:00 | 64, 67 |  | 22.25d |  |

| ID | WBS | Task | Duration | Start | Finish | Predecessors | Total float |
| --- | --- | --- | --- | --- | --- | --- | --- |
| 71 |  | Write Midterm Report | 8h | 2025-05-13 11:00 | 2025-05-14 11:00 |  | 22.25d |
| 72 |  | Proofread Midterm Report | 1h | 2025-05-14 11:00 | 2025-05-14 12:00 | 71 | 22.25d |
| 73 |  | Implement Feedback | 1h | 2025-05-14 13:00 | 2025-05-14 14:00 | 72 | 22.25d |
| 74 | 3.3.4 | **Organize Midterm Review** | 0.5d | 2025-05-14 14:00 | 2025-05-15 09:00 | 70 | 22.25d |
| 75 |  | Create Presentation | 2h | 2025-05-14 14:00 | 2025-05-14 16:00 |  | 22.25d |
| 76 |  | Practice Presentation | 2h | 2025-05-14 14:00 | 2025-05-14 16:00 | 75SS | 22.25d |
| 77 |  | Midterm Review | 2h | 2025-05-14 16:00 | 2025-05-15 09:00 | 76 | 22.25d |
| 78 | 4 | **Detailed Design** | 7d | 2025-05-15 09:00 | 2025-05-26 09:00 | 34 | 22.25d |
| 79 | 4.1 | **Perform Detailed Design** | 1.38d | 2025-05-15 15:00 | 2025-05-19 09:00 | 120 | 22.25d |
| 80 | 4.1.1 | **Perform Aerodynamic Subsystem Design** | 1d | 2025-05-15 15:00 | 2025-05-16 15:00 |  | 22.62d |
| 81 |  | Select Airfoil | 0.5h | 2025-05-15 15:00 | 2025-05-15 15:30 |  | 22.62d |
| 82 |  | Design Empennage | 1h | 2025-05-15 15:30 | 2025-05-15 16:30 | 81 | 22.62d |
| 83 |  | Optimize Aerodynamics | 2h | 2025-05-15 16:30 | 2025-05-16 09:30 | 82 | 22.62d |
| 84 |  | Perform CFD Analysis | 4h | 2025-05-16 09:30 | 2025-05-16 14:30 | 83 | 22.62d |
| 85 |  | Revise Final Drag Budget | 0.5h | 2025-05-16 14:30 | 2025-05-16 15:00 | 84 | 22.62d |
| 86 | 4.1.2 | **Perform Detailed EPS Architecture Design** | 0.38d | 2025-05-15 15:00 | 2025-05-16 09:00 | 80SS | 23.25d |
| 87 |  | Revise Final Power Budget | 0.5h | 2025-05-15 15:00 | 2025-05-15 15:30 |  | 23.25d |
| 88 |  | Select and Size Battery | 0.25h | 2025-05-15 15:30 | 2025-05-15 15:45 | 87 | 23.25d |
| 89 |  | Select and Size PDU | 0.25h | 2025-05-15 15:45 | 2025-05-15 16:00 | 88 | 23.25d |
| 90 |  | Design Electrical Architecture | 2h | 2025-05-15 16:00 | 2025-05-16 09:00 | 89 | 23.25d |
| 91 | 4.1.3 | **Perform Detailed Propulsion Design** | 0.5d | 2025-05-15 15:00 | 2025-05-16 10:00 | 80SS | 23.12d |
| 92 |  | Size and Place Propulsion System | 1h | 2025-05-15 15:00 | 2025-05-15 16:00 |  | 23.12d |
| 93 |  | Select Propeller and Motor | 1h | 2025-05-15 16:00 | 2025-05-15 17:00 | 92 | 23.12d |
| 94 |  | Model Propulsion System | 2h | 2025-05-16 08:00 | 2025-05-16 10:00 | 93 | 23.12d |
| 95 | 4.1.4 | **Design Control Subsystem** | 1.38d | 2025-05-15 15:00 | 2025-05-19 09:00 | 80SS | 22.25d |
| 96 |  | Size and Place Actuator | 1h | 2025-05-15 15:00 | 2025-05-15 16:00 |  | 22.25d |
| 97 |  | Size and Design Gyroscope | 1h | 2025-05-15 16:00 | 2025-05-15 17:00 | 96 | 22.25d |
| 98 |  | Select Actuator | 1h | 2025-05-16 08:00 | 2025-05-16 09:00 | 97 | 22.25d |
| 99 |  | Design Control Loop | 3h | 2025-05-16 09:00 | 2025-05-16 12:00 | 98 | 22.25d |
| 100 |  | Model Control System | 5h | 2025-05-16 13:00 | 2025-05-19 09:00 | 99 | 22.25d |
| 101 | 4.1.5 | **Design Comms Subsystem** | 0.38d | 2025-05-15 15:00 | 2025-05-16 09:00 | 80SS | 23.25d |
| 102 |  | Select Frequency Band | 1h | 2025-05-15 15:00 | 2025-05-15 16:00 |  | 23.25d |
| 103 |  | Create Link Budget | 1h | 2025-05-15 16:00 | 2025-05-15 17:00 | 102 | 23.25d |
| 104 |  | Size and Select Antenna | 1h | 2025-05-16 08:00 | 2025-05-16 09:00 | 103 | 23.25d |
| 105 | 4.1.6 | **Design Operational Architecture** | 0.5d | 2025-05-15 15:00 | 2025-05-16 10:00 | 80SS | 23.12d |
| 106 |  | Select Swarming Strategy | 1h | 2025-05-15 15:00 | 2025-05-15 16:00 |  | 23.12d |
| 107 |  | Model Swaming Behaviour | 2h | 2025-05-15 16:00 | 2025-05-16 09:00 | 106 | 23.12d |
| 108 |  | Model Environment | 1h | 2025-05-16 09:00 | 2025-05-16 10:00 | 107 | 23.12d |
| 109 | 4.1.7 | **Design Sensor** | 0.38d | 2025-05-15 15:00 | 2025-05-16 09:00 | 80SS | 23.25d |
| 110 |  | Select and Place Sensor | 1h | 2025-05-15 15:00 | 2025-05-15 16:00 |  | 23.25d |
| 111 |  | Model Sensor Data | 2h | 2025-05-15 16:00 | 2025-05-16 09:00 | 110 | 23.25d |
| 112 | 4.1.8 | **Design Structural Components** | 0.38d | 2025-05-15 15:00 | 2025-05-16 09:00 | 80SS | 23.25d |
| 113 |  | Create Structural Model | 0.5h | 2025-05-15 15:00 | 2025-05-15 15:30 |  | 23.25d |
| 114 |  | Perform FEM Analysis | 1.25h | 2025-05-15 15:30 | 2025-05-15 16:45 | 113 | 23.25d |
| 115 |  | Perform Dynamic Analysis | 1.25h | 2025-05-15 16:45 | 2025-05-16 09:00 | 114 | 23.25d |
| 116 | 4.1.9 | **Design Deployment Subsystem** | 0.25d | 2025-05-15 15:00 | 2025-05-15 17:00 | 80SS | 23.38d |
| 117 |  | Design Deployment System | 1h | 2025-05-15 15:00 | 2025-05-15 16:00 |  | 23.38d |
| 118 |  | Model Deployment System | 1h | 2025-05-15 16:00 | 2025-05-15 17:00 | 117 | 23.38d |
| 119 | 4.2 | **Verify & Validate** | 7d | 2025-05-15 09:00 | 2025-05-26 09:00 |  | 22.25d |
| 120 | 4.2.1 | **Perform Requirements Review** | 0.62d | 2025-05-15 09:00 | 2025-05-15 15:00 |  | 22.25d |
| 121 |  | Review Requirements | 1h | 2025-05-15 09:00 | 2025-05-15 10:00 |  | 22.25d |
| 122 |  | Analyse Killer Requirements | 2h | 2025-05-15 10:00 | 2025-05-15 12:00 | 121 | 22.25d |
| 123 |  | Mitigate or Change Requirements | 2h | 2025-05-15 13:00 | 2025-05-15 15:00 | 122 | 22.25d |
| 124 | 4.2.2 | **Evaluate Requirement Compliance** | 1.25d | 2025-05-22 16:00 | 2025-05-26 09:00 | 142 | 22.25d |
| 125 |  | Verify Requirements Compliance Through Inspection | 2h | 2025-05-22 16:00 | 2025-05-23 09:00 |  | 22.25d |
| 126 |  | Verify Requirements Compliance Through Analysis | 3h | 2025-05-23 09:00 | 2025-05-23 12:00 | 125 | 22.25d |
| 127 |  | Verify Requirements Compliance Through System Modelling | 5h | 2025-05-23 13:00 | 2025-05-26 09:00 | 126 | 22.25d |
| 128 | 4.2.3 | **Validate Model** | 0.62d | 2025-05-20 16:00 | 2025-05-21 12:00 | 146 | 24.88d |
| 129 |  | Generate Test Cases | 2h | 2025-05-20 16:00 | 2025-05-21 09:00 |  | 24.88d |
| 130 |  | Analyse Test Case Results | 1h | 2025-05-21 09:00 | 2025-05-21 10:00 | 129 | 24.88d |
| 131 |  | Investigate Model Through Inspection | 2h | 2025-05-21 10:00 | 2025-05-21 12:00 | 130 | 24.88d |
| 132 | 4.3 | **Integrate System** | 1.88d | 2025-05-19 09:00 | 2025-05-20 17:00 | 79 | 22.25d |
| 133 | 4.3.1 | **Perform Subsystem Assembly Design** | 1d | 2025-05-19 09:00 | 2025-05-20 09:00 |  | 22.25d |
| 134 |  | Design System Configuration | 5h | 2025-05-19 09:00 | 2025-05-19 15:00 |  | 22.25d |
| 135 |  | Design System Assembly Process | 3h | 2025-05-19 15:00 | 2025-05-20 09:00 | 134 | 22.25d |
| 136 | 4.3.2 | **Integrate Subsystems** | 0.88d | 2025-05-20 09:00 | 2025-05-20 17:00 | 133 | 22.25d |
| 137 |  | Design Aerodynamic Integration | 2h | 2025-05-20 09:00 | 2025-05-20 11:00 |  | 22.25d |
| 138 |  | Design EPS Integration | 1h | 2025-05-20 11:00 | 2025-05-20 12:00 | 137 | 22.25d |
| 139 |  | Design Structural Integration | 1h | 2025-05-20 13:00 | 2025-05-20 14:00 | 138 | 22.25d |
| 140 |  | Design Propulsion & Control Integration | 3h | 2025-05-20 14:00 | 2025-05-20 17:00 | 139 | 22.25d |

| ID | WBS | Task | Duration | Start | Finish | Predecessors | Total float |
| --- | --- | --- | --- | --- | --- | --- | --- |
| 141 | 4.4 | **Simulate System** | 5.75d | 2025-05-15 09:00 | 2025-05-22 16:00 |  | 22.88d |
| 142 | 4.4.1 | **Simulate and Analyse** | 1.88d | 2025-05-21 08:00 | 2025-05-22 16:00 | 132 | 22.25d |
| 143 |  | Analyse Swarm Performance | 4h | 2025-05-21 08:00 | 2025-05-21 12:00 |  | 22.25d |
| 144 |  | Analyse Flight Performance | 7h | 2025-05-21 13:00 | 2025-05-22 11:00 | 143 | 22.25d |
| 145 |  | Analyse Sensor Performance | 4h | 2025-05-22 11:00 | 2025-05-22 16:00 | 144 | 22.25d |
| 146 | 4.4.2 | **Extend Simulation** | 3.75d | 2025-05-15 09:00 | 2025-05-20 16:00 |  | 24.88d |
| 147 |  | Model Iteration | 10h | 2025-05-15 09:00 | 2025-05-16 11:00 |  | 24.88d |
| 148 |  | Extend Simulation with Swarming | 10h | 2025-05-16 11:00 | 2025-05-19 14:00 | 147 | 24.88d |
| 149 |  | Integration of Submodels | 10h | 2025-05-19 14:00 | 2025-05-20 16:00 | 148 | 24.88d |
| 150 | 5 | **Final Phase** | 19.38d | 2025-05-26 09:00 | 2025-06-20 12:00 | 78 | 4.5d |
| 151 | 5.1 | **Final Report** | 19.38d | 2025-05-26 09:00 | 2025-06-20 12:00 |  | 4.5d |
| 152 | 5.1.1 | **Draft Final Report** | 19.38d | 2025-05-26 09:00 | 2025-06-20 12:00 |  | 4.5d |
| 153 |  | Proofread Final Report | 4h | 2025-05-26 09:00 | 2025-05-26 14:00 |  | 23.38d |
| 154 |  | Implement Feedback | 4h | 2025-06-20 08:00 | 2025-06-20 12:00 | 240 | 4.5d |
| 155 |  | Draft Jury Summary | 8h | 2025-05-26 09:00 | 2025-05-27 09:00 | 152SS | 22.88d |
| 156 | 5.1.3 | **Prepare Final Review** | 1d | 2025-05-26 09:00 | 2025-05-27 09:00 |  | 22.88d |
| 157 |  | Create Presentation | 5h | 2025-05-26 09:00 | 2025-05-26 15:00 |  | 22.88d |
| 158 |  | Practice Presentation | 3h | 2025-05-26 15:00 | 2025-05-27 09:00 | 157 | 22.88d |
| 159 | 5.2 | **Symposium** | 1.62d | 2025-05-26 09:00 | 2025-05-27 15:00 |  | 22.25d |
| 160 |  | Create Poster | 13h | 2025-05-26 09:00 | 2025-05-27 15:00 | 156SS | 22.25d |
| 161 |  | Draft Red Booklet Summary | 8h | 2025-05-26 09:00 | 2025-05-27 09:00 | 156SS | 22.88d |
| 162 |  | Prepare Symposium Presentation | 8h | 2025-05-26 09:00 | 2025-05-27 09:00 | 156SS | 22.88d |
| 163 | 2 | **Concept Phase** | 3.06d | 2025-04-28 13:00 | 2025-05-01 13:30 | 2 | 22.25d |
| 164 | 2.1 | **Product and Project Scoping** | 0.36d | 2025-04-28 13:00 | 2025-04-28 15:54 |  | 24.95d |
| 165 |  | Establish Project Objectives | 0.5h | 2025-04-28 13:00 | 2025-04-28 13:30 |  | 25.06d |
| 166 | 2.1.2 | **Perform Market Analysis** | 0.19d | 2025-04-28 13:30 | 2025-04-28 15:00 | 165 | 25.06d |
| 167 |  | Analyze Existing Solutions & Market Needs | 1h | 2025-04-28 13:30 | 2025-04-28 14:30 | 165 | 25.06d |
| 168 |  | Perform SWOT of Prouduct on Market | 0.5h | 2025-04-28 14:30 | 2025-04-28 15:00 | 167 | 25.06d |
| 169 |  | Resource Allocation & Budget Breakdown | 1.5h | 2025-04-28 13:30 | 2025-04-28 15:00 | 166SS | 25.06d |
| 170 | 2.1.4 | **Develop Risk Assessment** | 0.3d | 2025-04-28 13:30 | 2025-04-28 15:54 | 166SS | 24.95d |
| 171 |  | Technical Risk Assessment | 1.2h | 2025-04-28 13:30 | 2025-04-28 14:42 |  | 24.95d |
| 172 |  | Contingency Management | 1.2h | 2025-04-28 14:42 | 2025-04-28 15:54 | 171 | 24.95d |
| 173 |  | Develop Sustainable Development Approach | 2h | 2025-04-28 13:30 | 2025-04-28 15:30 | 166SS | 25d |
| 174 | 2.2 | **Literature Study** | 0.38d | 2025-04-28 13:00 | 2025-04-28 16:00 | 164SS | 22.25d |
| 175 | 2.2.1 | **Conduct Research on Relevant Topics** | 0.12d | 2025-04-28 13:00 | 2025-04-28 14:00 |  | 22.25d |
| 176 |  | Research Aerodynamic Phenomena | 1h | 2025-04-28 13:00 | 2025-04-28 14:00 |  | 22.25d |
| 177 |  | Research Stability & Control Characteristics | 1h | 2025-04-28 13:00 | 2025-04-28 14:00 | 176SS | 22.5d |
| 178 |  | Research Propulsion & Power Options | 1h | 2025-04-28 13:00 | 2025-04-28 14:00 | 176SS | 22.5d |
| 179 |  | Research Structure & Materials of Similar Products | 0.5h | 2025-04-28 13:00 | 2025-04-28 13:30 | 176SS | 22.56d |
| 180 |  | Begin Initial Swarming Research | 0.5h | 2025-04-28 13:00 | 2025-04-28 13:30 | 176SS | 22.25d |
| 181 | 2.2.2 | **Review Literature with Teammates** | 0.12d | 2025-04-28 13:30 | 2025-04-28 14:30 |  | 22.25d |
| 182 |  | Present Findings with Teammates | 0.5h | 2025-04-28 13:30 | 2025-04-28 14:00 | 180 | 22.25d |
| 183 |  | Combine & Refine Findings | 0.5h | 2025-04-28 14:00 | 2025-04-28 14:30 | 182 | 22.25d |
| 184 | 2.2.3 | **Draft Literature Study** | 0.19d | 2025-04-28 14:30 | 2025-04-28 16:00 |  | 22.25d |
| 185 |  | Write Literature Study | 1h | 2025-04-28 14:30 | 2025-04-28 15:30 | 183 | 22.25d |
| 186 |  | Review & Quality Control | 0.5h | 2025-04-28 15:30 | 2025-04-28 16:00 | 185 | 22.25d |
| 187 | 2.3 | **Requirement Analysis** | 0.5d | 2025-04-28 16:00 | 2025-04-29 11:00 | 174 | 22.25d |
| 188 | 2.3.1 | **Review Stakeholder Requirements & Constraints** | 0.12d | 2025-04-28 16:00 | 2025-04-28 17:00 |  | 22.25d |
| 189 |  | Review User-/Top-Level Requirements and Constraints | 0.5h | 2025-04-28 16:00 | 2025-04-28 16:30 |  | 22.25d |
| 190 |  | Identify Driving Requirements and Constraints | 0.5h | 2025-04-28 16:00 | 2025-04-28 16:30 | 189SS | 22.25d |
| 191 |  | Assess Feasibility of Requirements and Constraints | 0.5h | 2025-04-28 16:30 | 2025-04-28 17:00 | 190 | 22.25d |
| 192 | 2.3.2 | **Break Down Requirements** | 0.38d | 2025-04-29 08:00 | 2025-04-29 11:00 | 188 | 22.25d |
| 193 |  | Create Requirement Discovery Tree | 3h | 2025-04-29 08:00 | 2025-04-29 11:00 |  | 22.25d |
| 194 |  | Determine System Requirements | 1.5h | 2025-04-29 08:00 | 2025-04-29 09:30 | 193SS | 22.25d |
| 195 |  | Determine Subsystem Requirements | 1.5h | 2025-04-29 09:30 | 2025-04-29 11:00 | 194 | 22.25d |
| 196 | 2.3.3 | **Map System Functions** | 0.31d | 2025-04-29 08:00 | 2025-04-29 10:30 | 192SS | 22.31d |
| 197 |  | Create Functional Flow Diagram | 1.25h | 2025-04-29 08:00 | 2025-04-29 09:15 |  | 22.31d |
| 198 |  | Create Functional Breakdown Diagram | 1.25h | 2025-04-29 09:15 | 2025-04-29 10:30 | 197 | 22.31d |
| 199 | 2.4 | **Simulation Setup** | 0.44d | 2025-04-28 16:00 | 2025-04-29 10:30 | 187SS | 24.5d |
| 200 |  | Define Simulation Goals | 0.4h | 2025-04-28 16:00 | 2025-04-28 16:24 |  | 24.5d |
| 201 | 2.4.2 | **Create Simulation Basis** | 0.07d | 2025-04-28 16:24 | 2025-04-28 17:00 | 200 | 24.5d |
| 202 |  | Select Simulation Tools | 0.2h | 2025-04-28 16:24 | 2025-04-28 16:36 |  | 24.5d |
| 203 |  | Set Up Simulation Environment | 0.3h | 2025-04-28 16:36 | 2025-04-28 16:54 | 202 | 24.5d |
| 204 |  | Document Assumptions | 0.1h | 2025-04-28 16:54 | 2025-04-28 17:00 | 203 | 24.5d |
| 205 | 2.4.3 | **Develop Preliminary Aerodynamics Simulation** | 0.31d | 2025-04-29 08:00 | 2025-04-29 10:30 | 201 | 24.5d |
| 206 |  | Build Simulation | 1.5h | 2025-04-29 08:00 | 2025-04-29 09:30 |  | 24.5d |
| 207 |  | Run Baseline Tests | 0.5h | 2025-04-29 09:30 | 2025-04-29 10:00 | 206 | 24.5d |
| 208 |  | Analyze Basic Results | 0.5h | 2025-04-29 10:00 | 2025-04-29 10:30 | 207 | 24.5d |
| 209 | 2.4.4 | **Develop Preliminary Dynamics Simulation** | 0.31d | 2025-04-29 08:00 | 2025-04-29 10:30 | 205SS | 24.5d |
| 210 |  | Build Simulation | 1.5h | 2025-04-29 08:00 | 2025-04-29 09:30 |  | 24.5d |

| ID | WBS | Task | Duration | Start | Finish | Predecessors | Total float |
| --- | --- | --- | --- | --- | --- | --- | --- |
| 211 |  | Run Baseline Tests | 0.5h | 2025-04-29 09:30 | 2025-04-29 10:00 | 210 | 24.5d |
| 212 |  | Analyze Basic Results | 0.5h | 2025-04-29 10:00 | 2025-04-29 10:30 | 211 | 24.5d |
| 213 | 2.5 | **Concept Generation** | 0.94d | 2025-04-29 11:00 | 2025-04-30 10:30 | 187 | 22.25d |
| 214 | 6.5.1 | **Brainstorm Subsystem Architecture Ideas** | 0.31d | 2025-04-29 11:00 | 2025-04-29 14:30 |  | 22.25d |
| 215 |  | Control & Stability Subsystem | 2.5h | 2025-04-29 11:00 | 2025-04-29 14:30 |  | 22.25d |
| 216 |  | Aerodynamics Subsystem | 2.5h | 2025-04-29 11:00 | 2025-04-29 14:30 | 215SS | 22.25d |
| 217 |  | Power & Propulsion Subsystem | 2.5h | 2025-04-29 11:00 | 2025-04-29 14:30 | 216SS | 22.25d |
| 218 |  | Structures & Materials Subsystem | 2.5h | 2025-04-29 11:00 | 2025-04-29 14:30 | 217SS | 22.25d |
| 219 | 6.5.2 | **Define System Architecture Concepts** | 0.31d | 2025-04-29 14:30 | 2025-04-29 17:00 | 214 | 22.25d |
| 220 |  | Integrate Subsystem Ideas | 1h | 2025-04-29 14:30 | 2025-04-29 15:30 |  | 22.25d |
| 221 |  | Define and Sketch Systems | 0.5h | 2025-04-29 15:30 | 2025-04-29 16:00 | 220 | 22.25d |
| 222 |  | Generate Concepts | 1h | 2025-04-29 16:00 | 2025-04-29 17:00 | 221 | 22.25d |
| 223 | 6.5.3 | **Select Concepts** | 0.31d | 2025-04-30 08:00 | 2025-04-30 10:30 | 219 | 22.25d |
| 224 |  | Generate Design Option Tree | 1h | 2025-04-30 08:00 | 2025-04-30 09:00 |  | 22.25d |
| 225 |  | Assess Feasibility | 0.25h | 2025-04-30 09:00 | 2025-04-30 09:15 | 224 | 22.25d |
| 226 |  | Select Initial Decision Criteria | 1h | 2025-04-30 09:15 | 2025-04-30 10:15 | 225 | 22.25d |
| 227 |  | Select 3 Concepts | 0.25h | 2025-04-30 10:15 | 2025-04-30 10:30 | 226 | 22.25d |
| 228 | 2.6 | **Review and Reporting** | 1.25d | 2025-04-30 10:30 | 2025-05-01 13:30 | 213 | 22.25d |
| 229 | 2.6.1 | **Draft Executive Overview** | 0.05d | 2025-04-30 10:30 | 2025-04-30 10:54 |  | 22.25d |
| 230 |  | Write Executive Overview | 0.3h | 2025-04-30 10:30 | 2025-04-30 10:48 |  | 22.25d |
| 231 |  | Review and Quality Control | 0.1h | 2025-04-30 10:48 | 2025-04-30 10:54 | 230 | 22.25d |
| 232 | 2.6.2 | **Draft Baseline Report** | 0.62d | 2025-04-30 10:54 | 2025-04-30 16:54 | 229 | 22.25d |
| 233 |  | Write Baseline Report | 4h | 2025-04-30 10:54 | 2025-04-30 15:54 |  | 22.25d |
| 234 |  | Review and Quality Control | 1h | 2025-04-30 15:54 | 2025-04-30 16:54 | 233 | 22.25d |
| 235 |  | Organize Baseline Review | 3h | 2025-04-30 16:54 | 2025-05-01 10:54 | 232 | 22.25d |
| 236 | 2.6.4 | **Perform Peer Review** | 0.2d | 2025-05-01 10:54 | 2025-05-01 13:30 | 235 | 22.25d |
| 237 |  | Review other Groups | 1h | 2025-05-01 10:54 | 2025-05-01 11:54 |  | 22.25d |
| 238 |  | Implement Own Feedback | 0.6h | 2025-05-01 11:54 | 2025-05-01 13:30 | 237 | 22.25d |
| 239 |  | Baseline Review | 0h | 2025-05-02 08:00 | 2025-05-02 08:00 |  |  |
| 240 |  | Final Review | 0h | 2025-06-20 08:00 | 2025-06-20 08:00 |  |  |
| 241 |  | Final Presentation | 0h | 2025-06-27 08:00 | 2025-06-27 08:00 |  |  |

## Version 2 (saved 2025-04-29)

Note of the change: update gantt chart

Last finish stays 2025-06-27. Complete tasks 1 → 28.

Added:

| ID | Task | Duration | Start | Finish | Predecessors | Constraint | Resources |
| --- | --- | --- | --- | --- | --- | --- | --- |
| 28 | Make Final Project Plan | 2h | 2025-04-30 10:00 | 2025-04-30 12:00 | 26 |  |  |
| 36 | **Refinement for Concept 1** | 4.12d | 2025-05-07 10:30 | 2025-05-13 11:25 |  |  |  |
| 60 | **Refinement for Concept 2** | 4.12d | 2025-05-13 11:25 | 2025-05-19 13:21 | 36 |  |  |
| 61 | **Size System** | 0.96d | 2025-05-13 11:25 | 2025-05-14 11:07 |  |  |  |
| 62 | **Perform Weight Estimation** | 0.25d | 2025-05-13 11:25 | 2025-05-13 14:25 |  |  |  |
| 63 | Create Mass Budget | 2h | 2025-05-13 11:25 | 2025-05-13 14:25 |  |  | JFM |
| 64 | Size Wing and Gyroscope | 1.6h | 2025-05-13 14:25 | 2025-05-13 16:01 | 62 |  | DvdP |
| 65 | Create Drag Estimation | 1.6h | 2025-05-13 16:01 | 2025-05-14 08:37 | 64 |  | TS |
| 66 | Size Propulsion System | 2.5h | 2025-05-14 08:37 | 2025-05-14 11:07 | 65 |  | MS |
| 67 | **Perform Preliminary Subsystem Design** | 3.15d | 2025-05-14 11:07 | 2025-05-19 13:21 | 61 |  |  |
| 68 | Make N2 Chart | 0.66h | 2025-05-14 11:07 | 2025-05-14 11:47 |  |  | DP |
| 69 | **Perform Aerodynamic Design** | 2.08d | 2025-05-14 11:47 | 2025-05-16 13:27 | 68 |  | TK |
| 70 | Generate Structure Mesh | 4.44h | 2025-05-14 11:47 | 2025-05-15 08:13 |  |  | DP |
| 71 | Perform CFD Analysis | 11.11h | 2025-05-15 08:13 | 2025-05-16 11:20 | 70 |  | TS |
| 72 | Export Lift, Drag, Moment | 1.11h | 2025-05-16 11:20 | 2025-05-16 13:27 | 71 |  | DP |
| 73 | **Perform Control & Stability Design** | 2.29d | 2025-05-14 11:47 | 2025-05-16 15:06 | 69SS |  | IPD |
| 74 | Run Dynamic Simulation | 2.78h | 2025-05-14 11:47 | 2025-05-14 15:34 |  |  | DvdP |
| 76 | Size Electronics & Sensors | 4.43h | 2025-05-16 09:40 | 2025-05-16 15:06 | 75 |  | JQ |
| 77 | **Perform Power & Propulsion Design** | 2.26d | 2025-05-14 11:47 | 2025-05-16 14:51 | 69SS |  | JQ |
| 78 | Size Propulsion | 4.17h | 2025-05-14 11:47 | 2025-05-14 16:57 |  |  | MS |
| 79 | Size Battery | 4.17h | 2025-05-16 09:40 | 2025-05-16 14:51 | 75 |  | JQ |
| 80 | **Perform Structures & Materials Design** | 1.35d | 2025-05-14 11:47 | 2025-05-15 15:37 | 69SS |  | KS |
| 81 | Design Structure | 8.33h | 2025-05-14 11:47 | 2025-05-15 13:07 |  |  | KS |
| 82 | Select Material | 2.5h | 2025-05-15 13:07 | 2025-05-15 15:37 | 81 |  | KS |
| 83 | Evaluate Requirement Compliance | 6.25h | 2025-05-16 15:06 | 2025-05-19 13:21 | 80, 77, 73, 69 |  |  |
| 84 | **Refinement for Concept 3** | 4.12d | 2025-05-19 13:21 | 2025-05-23 14:17 | 60 |  |  |
| 85 | **Size System** | 0.96d | 2025-05-19 13:21 | 2025-05-20 13:03 |  |  |  |
| 86 | **Perform Weight Estimation** | 0.25d | 2025-05-19 13:21 | 2025-05-19 15:21 |  |  |  |
| 87 | Create Mass Budget | 2h | 2025-05-19 13:21 | 2025-05-19 15:21 |  |  | JFM |
| 88 | Size Wing and Gyroscope | 1.6h | 2025-05-19 15:21 | 2025-05-19 16:57 | 86 |  | DvdP |
| 89 | Create Drag Estimation | 1.6h | 2025-05-19 16:57 | 2025-05-20 09:33 | 88 |  | TS |
| 90 | Size Propulsion System | 2.5h | 2025-05-20 09:33 | 2025-05-20 13:03 | 89 |  | MS |
| 91 | **Perform Preliminary Subsystem Design** | 3.15d | 2025-05-20 13:03 | 2025-05-23 14:17 | 85 |  |  |
| 92 | Make N2 Chart | 0.66h | 2025-05-20 13:03 | 2025-05-20 13:43 |  |  | DP |
| 93 | **Perform Aerodynamic Design** | 2.08d | 2025-05-20 13:43 | 2025-05-22 14:22 | 92 |  | TK |
| 94 | Generate Structure Mesh | 4.44h | 2025-05-20 13:43 | 2025-05-21 09:09 |  |  | DP |
| 95 | Perform CFD Analysis | 11.11h | 2025-05-21 09:09 | 2025-05-22 13:16 | 94 |  | TS |
| 96 | Export Lift, Drag, Moment | 1.11h | 2025-05-22 13:16 | 2025-05-22 14:22 | 95 |  | DP |
| 97 | **Perform Control & Stability Design** | 2.29d | 2025-05-20 13:43 | 2025-05-22 16:02 | 93SS |  | IPD |
| 98 | Run Dynamic Simulation | 2.78h | 2025-05-20 13:43 | 2025-05-20 16:30 |  |  | DvdP |
| 99 | Size Actuators | 11.11h | 2025-05-20 16:30 | 2025-05-22 10:36 | 98 |  | IPD |
| 100 | Size Electronics & Sensors | 4.43h | 2025-05-22 10:36 | 2025-05-22 16:02 | 99 |  | JQ |
| 101 | **Perform Power & Propulsion Design** | 2.26d | 2025-05-20 13:43 | 2025-05-22 15:46 | 93SS |  | JQ |
| 102 | Size Propulsion | 4.17h | 2025-05-20 13:43 | 2025-05-21 08:53 |  |  | MS |
| 103 | Size Battery | 4.17h | 2025-05-22 10:36 | 2025-05-22 15:46 | 99 |  | JQ |
| 104 | **Perform Structures & Materials Design** | 1.35d | 2025-05-20 13:43 | 2025-05-21 16:33 | 93SS |  | KS |
| 105 | Design Structure | 8.33h | 2025-05-20 13:43 | 2025-05-21 14:03 |  |  | KS |
| 106 | Select Material | 2.5h | 2025-05-21 14:03 | 2025-05-21 16:33 | 105 |  | KS |
| 107 | Evaluate Requirement Compliance | 6.25h | 2025-05-22 16:02 | 2025-05-23 14:17 | 104, 101, 97, 93 |  |  |
| 126 | Midterm Report | 0h | 2025-05-26 17:15 | 2025-05-26 17:15 |  | finish no earlier than 2025-05-26 17:15 | ALL |
| 284 | Baseline Report Draft | 0h | 2025-05-02 17:15 | 2025-05-02 17:15 |  | finish no earlier than 2025-05-02 17:15 | RV |

Removed: 38 Size Drone

Changed:

| ID | Task | Start | Finish | Duration | Complete | Total float | Predecessors | Other |
| --- | --- | --- | --- | --- | --- | --- | --- | --- |
| 2 | **Project Foundation** | 2025-04-22 08:00 A | 2025-04-28 12:00 → 2025-04-30 12:00 (+2d) | 4.5d → 6.5d | 0% → 79% | 22.25d → 41.5d |  |  |
| 3 | **Familiarization** | 2025-04-22 08:00 A | 2025-04-22 10:00 A |  | 0% → 100% | 22.25d → none |  |  |
| 4 | **Read the Project Guide** | 2025-04-22 08:00 A | 2025-04-22 09:00 A |  | 0% → 100% | 22.25d → none |  |  |
| 5 | Define MNS | 2025-04-22 08:00 A | 2025-04-22 09:00 A |  | 0% → 100% | 22.25d → none |  |  |
| 6 | Define POS | 2025-04-22 08:00 A | 2025-04-22 09:00 A |  | 0% → 100% | 22.25d → none |  |  |
| 7 | Discuss Mission with Supervisors | 2025-04-22 09:00 A | 2025-04-22 10:00 A |  | 0% → 100% | 22.25d → none |  |  |
| 8 | Read Paper on X-zyLo | 2025-04-22 08:00 A | 2025-04-22 09:00 A |  | 0% → 100% | 22.25d → none |  |  |
| 9 | **Define Organizational Structure** | 2025-04-22 10:00 A | 2025-04-22 15:00 A |  | 0% → 100% | 22.25d → none |  |  |
| 10 | Discuss Expectations | 2025-04-22 10:00 A | 2025-04-22 11:00 A |  | 0% → 100% | 22.25d → none |  |  |
| 11 | Define Team Rules | 2025-04-22 11:00 A | 2025-04-22 12:00 A |  | 0% → 100% | 22.25d → none |  |  |
| 12 | **Construct Organogram** | 2025-04-22 13:00 A | 2025-04-22 15:00 A |  | 0% → 100% | 22.25d → none |  |  |
| 13 | Define Team Roles | 2025-04-22 13:00 A | 2025-04-22 14:00 A |  | 0% → 100% | 22.25d → none |  | resources none → DP |
| 14 | Assign Team Roles | 2025-04-22 14:00 A | 2025-04-22 15:00 A |  | 0% → 100% | 22.25d → none |  | resources none → DP |
| 15 | **Define the Planning** | 2025-04-22 15:00 A | 2025-04-24 17:00 A |  | 0% → 100% | 22.25d → none |  |  |
| 16 | Create Overview of the Phases | 2025-04-22 15:00 A | 2025-04-22 16:00 A |  | 0% → 100% | 22.25d → none |  |  |
| 17 | Create Workflow Diagram | 2025-04-22 16:00 A | 2025-04-23 14:00 A |  | 0% → 100% | 22.25d → none |  |  |
| 18 | Create Work Breakdown Structure | 2025-04-23 14:00 A | 2025-04-24 09:00 A |  | 0% → 100% | 22.25d → none |  |  |
| 19 | **Create Gantt Chart** | 2025-04-24 09:00 A | 2025-04-24 17:00 A |  | 0% → 100% | 22.25d → none |  |  |
| 20 | Define Work Packages | 2025-04-24 09:00 A | 2025-04-24 14:00 A |  | 0% → 100% | 22.25d → none |  | resources none → KS |
| 21 | Create Time Frames | 2025-04-24 14:00 A | 2025-04-24 16:00 A |  | 0% → 100% | 22.25d → none |  | resources none → KS |
| 22 | Assign Work Packages | 2025-04-24 16:00 A | 2025-04-24 17:00 A |  | 0% → 100% | 22.25d → none |  | resources none → KS |
| 23 | **Project Plan** | 2025-04-25 08:00 A | 2025-04-28 12:00 → 2025-04-30 12:00 (+2d) | 1.5d → 3.5d | 0% → 36% | 22.25d → 41.5d |  |  |
| 24 | Draft Project Plan | 2025-04-25 08:00 A |  |  | 0% → 50% | 22.25d → 0d |  |  |
| 25 | Review Project Plan | 2025-04-28 08:00 A | 2025-04-28 10:00 → 2025-04-30 09:00 (+2d) |  | 0% → 50% | 22.25d → 2.5d | 24 → 24FS+2d |  |
| 26 | Implement Feedback | 2025-04-28 10:00 → 2025-04-30 09:00 (+2d) | 2025-04-28 11:00 → 2025-04-30 10:00 (+2d) |  |  | 22.25d → 2.5d |  |  |
| 27 | Create Personal Appendix | 2025-04-28 11:00 → 2025-04-25 08:00 (-3d) | 2025-04-28 12:00 → 2025-04-25 09:00 (-3d) |  |  | 22.25d → 44.88d | 26 → 24SS |  |
| 29 | **Define Risk and Sustainability** | 2025-04-22 15:00 A | 2025-04-22 17:00 A |  | 0% → 100% | 24.25d → none |  |  |
| 30 | Perform SWOT Analysis | 2025-04-22 15:00 A | 2025-04-22 15:30 A |  | 0% → 100% | 24.25d → none |  |  |
| 31 | Make Risk Mitigation Plan | 2025-04-22 15:30 A | 2025-04-22 16:30 A |  | 0% → 100% | 24.25d → none |  |  |
| 32 | **Make a Sustainable Approach Plan** | 2025-04-22 16:30 A | 2025-04-22 17:00 A |  | 0% → 100% | 24.25d → none |  |  |
| 33 | Create Risk Heat Map on Sustainability | 2025-04-22 16:30 A | 2025-04-22 16:42 A |  | 0% → 100% | 24.25d → none |  | resources none → JQ |
| 34 | Define Project Contribution to Sustainability | 2025-04-22 16:42 A | 2025-04-22 17:00 A |  | 0% → 100% | 24.25d → none |  |  |
| 35 | **Preliminary Design & Trade-Off** | 2025-05-01 13:30 → 2025-05-07 10:30 (+6d) | 2025-05-15 09:00 → 2025-05-29 17:15 (+14d) | 9.56d → 16.69d |  | 22.25d → 11.38d |  |  |
| 37 | **Size System** | 2025-05-01 13:30 → 2025-05-07 10:30 (+6d) | 2025-05-06 08:30 → 2025-05-08 10:12 (+2d) | 2.5d → 0.96d |  | 22.25d → 15.46d |  |  |
| 38 | **Perform Weight Estimation** | 2025-05-01 13:30 → 2025-05-07 10:30 (+6d) | 2025-05-02 09:30 → 2025-05-07 13:30 (+5d) | 0.62d → 0.25d |  | 22.88d → 15.46d |  |  |
| 39 | Create Mass Budget | 2025-05-01 13:30 → 2025-05-07 10:30 (+6d) | 2025-05-02 09:30 → 2025-05-07 13:30 (+5d) | 5h → 2h |  | 22.88d → 15.46d |  | resources none → JFM |
| 40 | Size Wing and Gyroscope | 2025-05-02 09:30 → 2025-05-07 13:30 (+5d) | 2025-05-02 15:30 → 2025-05-07 15:06 (+5d) | 5h → 1.6h |  | 22.88d → 15.46d | none → 38 | resources none → DvdP |
| 41 | Create Drag Estimation | 2025-05-02 15:30 → 2025-05-07 15:06 (+5d) | 2025-05-05 08:30 → 2025-05-07 16:42 (+2d) | 2h → 1.6h |  | 22.88d → 15.46d |  | resources none → TS |
| 42 | Size Propulsion System | 2025-05-05 08:30 → 2025-05-07 16:42 (+2d) | 2025-05-05 11:30 → 2025-05-08 10:12 (+3d) | 3h → 2.5h |  | 22.88d → 15.46d |  | resources none → MS |
| 43 | **Perform Preliminary Subsystem Design** | 2025-05-06 08:30 → 2025-05-08 10:12 (+2d) | 2025-05-12 16:00 → 2025-05-13 11:25 (+1d) | 4.81d → 3.15d |  | 22.25d → 15.38d |  |  |
| 44 | Make N2 Chart | 2025-05-06 08:30 → 2025-05-08 10:12 (+2d) | 2025-05-06 10:30 → 2025-05-08 10:51 (+2d) | 2h → 0.66h |  | 22.25d → 15.59d |  | resources none → DP |
| 45 | **Perform Aerodynamic Design** | 2025-05-06 10:30 → 2025-05-08 10:51 (+2d) | 2025-05-08 09:30 → 2025-05-12 11:31 (+4d) | 1.88d → 2.08d |  | 22.25d → 15.59d |  | resources none → TK |
| 46 | Generate Structure Mesh | 2025-05-06 10:30 → 2025-05-08 10:51 (+2d) | 2025-05-06 15:30 → 2025-05-08 16:18 (+2d) | 4h → 4.44h |  | 22.25d → 15.59d |  | resources none → DP |
| 47 | Perform CFD Analysis | 2025-05-06 15:30 → 2025-05-08 16:18 (+2d) | 2025-05-08 08:30 → 2025-05-12 10:24 (+4d) | 10h → 11.11h |  | 22.25d → 15.59d |  | resources none → TS |
| 48 | Export Lift, Drag, Moment | 2025-05-08 08:30 → 2025-05-12 10:24 (+4d) | 2025-05-08 09:30 → 2025-05-12 11:31 (+4d) | 1h → 1.11h |  | 22.25d → 15.59d |  | resources none → DP |
| 49 | **Perform Control & Stability Design** | 2025-05-08 09:30 → 2025-05-08 10:51 | 2025-05-12 10:00 → 2025-05-12 14:10 | 2.06d → 2.29d |  | 22.25d → 15.38d |  | resources none → IPD |
| 50 | Run Dynamic Simulation | 2025-05-08 09:30 → 2025-05-08 10:51 | 2025-05-08 12:00 → 2025-05-08 14:38 | 2.5h → 2.78h |  | 22.25d → 15.38d | 48 → none | resources none → DvdP |
| 51 | Size Actuators | 2025-05-08 13:00 → 2025-05-08 14:38 | 2025-05-09 15:00 → 2025-05-12 08:45 (+3d) | 10h → 11.11h |  | 22.25d → 15.38d |  | resources none → IPD |
| 52 | Size Electronics & Sensors | 2025-05-09 15:00 → 2025-05-12 08:45 (+3d) | 2025-05-12 10:00 → 2025-05-12 14:10 | 4h → 4.43h |  | 22.25d → 15.38d |  | resources none → JQ |
| 53 | **Perform Power & Propulsion Design** | 2025-05-06 10:30 → 2025-05-08 10:51 (+2d) | 2025-05-12 08:30 → 2025-05-12 13:55 | 3.75d → 2.26d |  | 22.44d → 15.41d |  | resources none → JQ |
| 54 | Size Propulsion | 2025-05-06 10:30 → 2025-05-08 10:51 (+2d) | 2025-05-06 14:00 → 2025-05-08 16:01 (+2d) | 2.5h → 4.17h |  | 24.31d → 17.15d |  | resources none → MS |
| 55 | Size Battery | 2025-05-09 15:00 → 2025-05-12 08:45 (+3d) | 2025-05-12 08:30 → 2025-05-12 13:55 | 2.5h → 4.17h |  | 22.44d → 15.41d | 75, 51 → 51 | resources none → JQ |
| 56 | **Perform Structures & Materials Design** | 2025-05-06 10:30 → 2025-05-08 10:51 (+2d) | 2025-05-06 16:30 → 2025-05-09 14:41 (+3d) | 0.62d → 1.35d |  | 25.56d → 16.32d |  | resources none → KS |
| 57 | Design Structure | 2025-05-06 10:30 → 2025-05-08 10:51 (+2d) | 2025-05-06 16:30 → 2025-05-09 11:11 (+3d) | 5h → 8.33h |  | 25.56d → 16.32d |  | resources none → KS |
| 58 | Select Material | 2025-05-06 10:30 → 2025-05-09 11:11 (+3d) | 2025-05-06 12:00 → 2025-05-09 14:41 (+3d) | 1.5h → 2.5h |  | 26d → 16.32d | 57SS → 57 | resources none → KS |
| 59 | Evaluate Requirement Compliance | 2025-05-12 10:00 → 2025-05-12 14:10 | 2025-05-12 16:00 → 2025-05-13 11:25 (+1d) | 5h → 6.25h |  | 22.25d → 15.38d |  | resources none → KS |
| 75 | Size Actuators | 2025-05-08 13:00 → 2025-05-14 15:34 (+6d) | 2025-05-09 15:00 → 2025-05-16 09:40 (+7d) | 10h → 11.11h |  | 22.44d → 15.3d | 50, 54 → 74 | resources none → IPD |
| 108 | **Extend Simulation** | 2025-05-01 13:30 → 2025-05-07 10:30 (+6d) | 2025-05-06 08:30 → 2025-05-23 15:30 (+17d) | 2.5d → 12.5d |  | 22.25d → 15.56d | 38SS → 36SS | resources none → TS |
| 109 | Implement Propulsion & Actuators | 2025-05-01 13:30 → 2025-05-07 10:30 (+6d) | 2025-05-02 15:30 → 2025-05-15 13:30 (+13d) | 10h → 50h |  | 22.25d → 15.56d |  | resources none → MS |
| 110 | Implement Control Capability | 2025-05-02 15:30 → 2025-05-15 13:30 (+13d) | 2025-05-06 08:30 → 2025-05-23 15:30 (+17d) | 10h → 50h |  | 22.25d → 15.56d |  | resources none → JFM |
| 111 | **Trade-Off** | 2025-05-12 16:00 → 2025-05-23 14:17 (+11d) | 2025-05-15 09:00 → 2025-05-26 09:17 (+11d) | 2.25d → 0.5d |  | 22.25d → 15.21d | 43 → 84 |  |
| 112 | **Perform Trade-Off** | 2025-05-12 16:00 → 2025-05-23 14:17 (+11d) | 2025-05-13 09:00 → 2025-05-26 09:17 (+13d) | 0.25d → 0.5d |  | 22.5d → 15.21d |  | resources none → JQ |
| 113 | Determine Selection Criteria & Weights | 2025-05-12 16:00 → 2025-05-23 14:17 (+11d) | 2025-05-13 09:00 → 2025-05-26 09:17 (+13d) | 2h → 4h |  | 22.5d → 15.21d |  | resources none → JFM |
| 114 | Graphical Trade-Off Tables | 2025-05-12 16:00 → 2025-05-23 14:17 (+11d) | 2025-05-13 09:00 → 2025-05-26 09:17 (+13d) | 2h → 4h |  | 22.5d → 15.21d |  | resources none → IPD |
| 115 | **Extend Risk Analysis** | 2025-05-12 16:00 → 2025-05-23 14:17 (+11d) | 2025-05-13 11:00 → 2025-05-26 09:17 (+13d) |  |  | 22.25d → 15.21d |  | resources none → DvdP |
| 116 | Update Risk Map | 2025-05-12 16:00 → 2025-05-23 14:17 (+11d) | 2025-05-13 09:00 → 2025-05-26 09:17 (+13d) | 2h → 4h |  | 22.25d → 15.21d |  | resources none → MS |
| 117 | Assess Concept Risk | 2025-05-13 09:00 → 2025-05-23 14:17 (+10d) | 2025-05-13 11:00 → 2025-05-26 09:17 (+13d) | 2h → 4h |  | 22.25d → 15.21d | 116 → 116SS | resources none → JQ |
| 118 | **Draft Midterm Report** | 2025-05-13 11:00 → 2025-05-23 14:17 (+10d) | 2025-05-14 14:00 → 2025-05-29 17:15 (+15d) | 1.25d → 4.34d |  | 22.25d → 3.51d | 112, 115 → 112SS, 115SS | resources none → RV |
| 119 | Write Midterm Report | 2025-05-13 11:00 → 2025-05-23 14:17 (+10d) | 2025-05-14 11:00 → 2025-05-26 14:17 (+12d) |  |  | 22.25d → 14.59d |  | resources none → RV |
| 120 | Proofread Midterm Report | 2025-05-14 11:00 → 2025-05-26 14:17 (+12d) | 2025-05-14 12:00 → 2025-05-26 15:17 (+12d) |  |  | 22.25d → 14.59d |  | resources none → RV |

| ID | Task | Start | Finish | Duration | Total float | Predecessors | Other |
| --- | --- | --- | --- | --- | --- | --- | --- |
| 121 | Implement Feedback | 2025-05-14 13:00 → 2025-05-27 08:00 (+13d) | 2025-05-14 14:00 → 2025-05-27 09:00 (+13d) |  | 22.25d → 14.25d | 120 → 126 | resources none → TK |
| 122 | **Organize Midterm Review** | 2025-05-14 14:00 → 2025-05-27 08:00 (+13d) | 2025-05-15 09:00 → 2025-05-29 17:15 (+14d) | 0.5d → 3d | 22.25d → 0d | 118 → none | resources none → TK |
| 123 | Create Presentation | 2025-05-14 14:00 → 2025-05-27 08:00 (+13d) | 2025-05-14 16:00 → 2025-05-27 11:19 (+13d) | 2h → 3.33h | 22.25d → 2.17d | none → 126 | resources none → DP |
| 124 | Practice Presentation | 2025-05-14 14:00 → 2025-05-27 11:19 (+13d) | 2025-05-14 16:00 → 2025-05-27 15:39 (+13d) | 2h → 3.33h | 22.25d → 2.17d | 123SS → 123 | resources none → ALL |
| 125 | Midterm Review | 2025-05-14 16:00 → 2025-05-29 17:15 (+15d) | 2025-05-15 09:00 → 2025-05-29 17:15 (+14d) | 2h → 0h | 22.25d → 0d |  | constraint none → finish no earlier than 2025-05-29 17:15; resources none → ALL |
| 127 | **Detailed Design** | 2025-05-15 09:00 → 2025-05-30 08:00 (+15d) | 2025-05-26 09:00 → 2025-06-09 17:00 (+14d) |  | 22.25d → 11.38d |  |  |
| 128 | **Perform Detailed Design** | 2025-05-15 15:00 → 2025-05-30 14:00 (+15d) | 2025-05-19 09:00 → 2025-06-02 17:00 (+14d) |  | 22.25d → 11.38d |  |  |
| 129 | **Perform Aerodynamic Subsystem Design** | 2025-05-15 15:00 → 2025-05-30 14:00 (+15d) | 2025-05-16 15:00 → 2025-06-02 14:00 (+17d) |  | 22.62d → 11.75d |  |  |
| 130 | Select Airfoil | 2025-05-15 15:00 → 2025-05-30 14:00 (+15d) | 2025-05-15 15:30 → 2025-05-30 14:30 (+15d) |  | 22.62d → 11.75d |  |  |
| 131 | Design Empennage | 2025-05-15 15:30 → 2025-05-30 14:30 (+15d) | 2025-05-15 16:30 → 2025-05-30 15:30 (+15d) |  | 22.62d → 11.75d |  |  |
| 132 | Optimize Aerodynamics | 2025-05-15 16:30 → 2025-05-30 15:30 (+15d) | 2025-05-16 09:30 → 2025-06-02 08:30 (+17d) |  | 22.62d → 11.75d |  |  |
| 133 | Perform CFD Analysis | 2025-05-16 09:30 → 2025-06-02 08:30 (+17d) | 2025-05-16 14:30 → 2025-06-02 13:30 (+17d) |  | 22.62d → 11.75d |  |  |
| 134 | Revise Final Drag Budget | 2025-05-16 14:30 → 2025-06-02 13:30 (+17d) | 2025-05-16 15:00 → 2025-06-02 14:00 (+17d) |  | 22.62d → 11.75d |  |  |
| 135 | **Perform Detailed EPS Architecture Design** | 2025-05-15 15:00 → 2025-05-30 14:00 (+15d) | 2025-05-16 09:00 → 2025-05-30 17:00 (+14d) |  | 23.25d → 12.38d |  |  |
| 136 | Revise Final Power Budget | 2025-05-15 15:00 → 2025-05-30 14:00 (+15d) | 2025-05-15 15:30 → 2025-05-30 14:30 (+15d) |  | 23.25d → 12.38d |  |  |
| 137 | Select and Size Battery | 2025-05-15 15:30 → 2025-05-30 14:30 (+15d) | 2025-05-15 15:45 → 2025-05-30 14:45 (+15d) |  | 23.25d → 12.38d |  |  |
| 138 | Select and Size PDU | 2025-05-15 15:45 → 2025-05-30 14:45 (+15d) | 2025-05-15 16:00 → 2025-05-30 15:00 (+15d) |  | 23.25d → 12.38d |  |  |
| 139 | Design Electrical Architecture | 2025-05-15 16:00 → 2025-05-30 15:00 (+15d) | 2025-05-16 09:00 → 2025-05-30 17:00 (+14d) |  | 23.25d → 12.38d |  |  |
| 140 | **Perform Detailed Propulsion Design** | 2025-05-15 15:00 → 2025-05-30 14:00 (+15d) | 2025-05-16 10:00 → 2025-06-02 09:00 (+17d) |  | 23.12d → 12.25d |  |  |
| 141 | Size and Place Propulsion System | 2025-05-15 15:00 → 2025-05-30 14:00 (+15d) | 2025-05-15 16:00 → 2025-05-30 15:00 (+15d) |  | 23.12d → 12.25d |  |  |
| 142 | Select Propeller and Motor | 2025-05-15 16:00 → 2025-05-30 15:00 (+15d) | 2025-05-15 17:00 → 2025-05-30 16:00 (+15d) |  | 23.12d → 12.25d |  |  |
| 143 | Model Propulsion System | 2025-05-16 08:00 → 2025-05-30 16:00 (+14d) | 2025-05-16 10:00 → 2025-06-02 09:00 (+17d) |  | 23.12d → 12.25d |  |  |
| 144 | **Design Control Subsystem** | 2025-05-15 15:00 → 2025-05-30 14:00 (+15d) | 2025-05-19 09:00 → 2025-06-02 17:00 (+14d) |  | 22.25d → 11.38d |  |  |
| 145 | Size and Place Actuator | 2025-05-15 15:00 → 2025-05-30 14:00 (+15d) | 2025-05-15 16:00 → 2025-05-30 15:00 (+15d) |  | 22.25d → 11.38d |  |  |
| 146 | Size and Design Gyroscope | 2025-05-15 16:00 → 2025-05-30 15:00 (+15d) | 2025-05-15 17:00 → 2025-05-30 16:00 (+15d) |  | 22.25d → 11.38d |  |  |
| 147 | Select Actuator | 2025-05-16 08:00 → 2025-05-30 16:00 (+14d) | 2025-05-16 09:00 → 2025-05-30 17:00 (+14d) |  | 22.25d → 11.38d |  |  |
| 148 | Design Control Loop | 2025-05-16 09:00 → 2025-06-02 08:00 (+17d) | 2025-05-16 12:00 → 2025-06-02 11:00 (+17d) |  | 22.25d → 11.38d |  |  |
| 149 | Model Control System | 2025-05-16 13:00 → 2025-06-02 11:00 (+17d) | 2025-05-19 09:00 → 2025-06-02 17:00 (+14d) |  | 22.25d → 11.38d |  |  |
| 150 | **Design Comms Subsystem** | 2025-05-15 15:00 → 2025-05-30 14:00 (+15d) | 2025-05-16 09:00 → 2025-05-30 17:00 (+14d) |  | 23.25d → 12.38d |  |  |
| 151 | Select Frequency Band | 2025-05-15 15:00 → 2025-05-30 14:00 (+15d) | 2025-05-15 16:00 → 2025-05-30 15:00 (+15d) |  | 23.25d → 12.38d |  |  |
| 152 | Create Link Budget | 2025-05-15 16:00 → 2025-05-30 15:00 (+15d) | 2025-05-15 17:00 → 2025-05-30 16:00 (+15d) |  | 23.25d → 12.38d |  |  |
| 153 | Size and Select Antenna | 2025-05-16 08:00 → 2025-05-30 16:00 (+14d) | 2025-05-16 09:00 → 2025-05-30 17:00 (+14d) |  | 23.25d → 12.38d |  |  |
| 154 | **Design Operational Architecture** | 2025-05-15 15:00 → 2025-05-30 14:00 (+15d) | 2025-05-16 10:00 → 2025-06-02 09:00 (+17d) |  | 23.12d → 12.25d |  |  |
| 155 | Select Swarming Strategy | 2025-05-15 15:00 → 2025-05-30 14:00 (+15d) | 2025-05-15 16:00 → 2025-05-30 15:00 (+15d) |  | 23.12d → 12.25d |  |  |
| 156 | Model Swaming Behaviour | 2025-05-15 16:00 → 2025-05-30 15:00 (+15d) | 2025-05-16 09:00 → 2025-05-30 17:00 (+14d) |  | 23.12d → 12.25d |  |  |
| 157 | Model Environment | 2025-05-16 09:00 → 2025-06-02 08:00 (+17d) | 2025-05-16 10:00 → 2025-06-02 09:00 (+17d) |  | 23.12d → 12.25d |  |  |
| 158 | **Design Sensor** | 2025-05-15 15:00 → 2025-05-30 14:00 (+15d) | 2025-05-16 09:00 → 2025-05-30 17:00 (+14d) |  | 23.25d → 12.38d |  |  |
| 159 | Select and Place Sensor | 2025-05-15 15:00 → 2025-05-30 14:00 (+15d) | 2025-05-15 16:00 → 2025-05-30 15:00 (+15d) |  | 23.25d → 12.38d |  |  |
| 160 | Model Sensor Data | 2025-05-15 16:00 → 2025-05-30 15:00 (+15d) | 2025-05-16 09:00 → 2025-05-30 17:00 (+14d) |  | 23.25d → 12.38d |  |  |
| 161 | **Design Structural Components** | 2025-05-15 15:00 → 2025-05-30 14:00 (+15d) | 2025-05-16 09:00 → 2025-05-30 17:00 (+14d) |  | 23.25d → 12.38d |  |  |
| 162 | Create Structural Model | 2025-05-15 15:00 → 2025-05-30 14:00 (+15d) | 2025-05-15 15:30 → 2025-05-30 14:30 (+15d) |  | 23.25d → 12.38d |  |  |
| 163 | Perform FEM Analysis | 2025-05-15 15:30 → 2025-05-30 14:30 (+15d) | 2025-05-15 16:45 → 2025-05-30 15:45 (+15d) |  | 23.25d → 12.38d |  |  |
| 164 | Perform Dynamic Analysis | 2025-05-15 16:45 → 2025-05-30 15:45 (+15d) | 2025-05-16 09:00 → 2025-05-30 17:00 (+14d) |  | 23.25d → 12.38d |  |  |
| 165 | **Design Deployment Subsystem** | 2025-05-15 15:00 → 2025-05-30 14:00 (+15d) | 2025-05-15 17:00 → 2025-05-30 16:00 (+15d) |  | 23.38d → 12.5d |  |  |
| 166 | Design Deployment System | 2025-05-15 15:00 → 2025-05-30 14:00 (+15d) | 2025-05-15 16:00 → 2025-05-30 15:00 (+15d) |  | 23.38d → 12.5d |  |  |
| 167 | Model Deployment System | 2025-05-15 16:00 → 2025-05-30 15:00 (+15d) | 2025-05-15 17:00 → 2025-05-30 16:00 (+15d) |  | 23.38d → 12.5d |  |  |
| 168 | **Verify & Validate** | 2025-05-15 09:00 → 2025-05-30 08:00 (+15d) | 2025-05-26 09:00 → 2025-06-09 17:00 (+14d) |  | 22.25d → 11.38d |  |  |
| 169 | **Perform Requirements Review** | 2025-05-15 09:00 → 2025-05-30 08:00 (+15d) | 2025-05-15 15:00 → 2025-05-30 14:00 (+15d) |  | 22.25d → 11.38d |  |  |
| 170 | Review Requirements | 2025-05-15 09:00 → 2025-05-30 08:00 (+15d) | 2025-05-15 10:00 → 2025-05-30 09:00 (+15d) |  | 22.25d → 11.38d |  |  |
| 171 | Analyse Killer Requirements | 2025-05-15 10:00 → 2025-05-30 09:00 (+15d) | 2025-05-15 12:00 → 2025-05-30 11:00 (+15d) |  | 22.25d → 11.38d |  |  |
| 172 | Mitigate or Change Requirements | 2025-05-15 13:00 → 2025-05-30 11:00 (+15d) | 2025-05-15 15:00 → 2025-05-30 14:00 (+15d) |  | 22.25d → 11.38d |  |  |
| 173 | **Evaluate Requirement Compliance** | 2025-05-22 16:00 → 2025-06-06 15:00 (+15d) | 2025-05-26 09:00 → 2025-06-09 17:00 (+14d) |  | 22.25d → 11.38d |  |  |
| 174 | Verify Requirements Compliance Through Inspection | 2025-05-22 16:00 → 2025-06-06 15:00 (+15d) | 2025-05-23 09:00 → 2025-06-06 17:00 (+14d) |  | 22.25d → 11.38d |  |  |
| 175 | Verify Requirements Compliance Through Analysis | 2025-05-23 09:00 → 2025-06-09 08:00 (+17d) | 2025-05-23 12:00 → 2025-06-09 11:00 (+17d) |  | 22.25d → 11.38d |  |  |
| 176 | Verify Requirements Compliance Through System Modelling | 2025-05-23 13:00 → 2025-06-09 11:00 (+17d) | 2025-05-26 09:00 → 2025-06-09 17:00 (+14d) |  | 22.25d → 11.38d |  |  |
| 177 | **Validate Model** | 2025-05-20 16:00 → 2025-06-04 15:00 (+15d) | 2025-05-21 12:00 → 2025-06-05 11:00 (+15d) |  | 24.88d → 14d |  |  |
| 178 | Generate Test Cases | 2025-05-20 16:00 → 2025-06-04 15:00 (+15d) | 2025-05-21 09:00 → 2025-06-04 17:00 (+14d) |  | 24.88d → 14d |  |  |
| 179 | Analyse Test Case Results | 2025-05-21 09:00 → 2025-06-05 08:00 (+15d) | 2025-05-21 10:00 → 2025-06-05 09:00 (+15d) |  | 24.88d → 14d |  |  |
| 180 | Investigate Model Through Inspection | 2025-05-21 10:00 → 2025-06-05 09:00 (+15d) | 2025-05-21 12:00 → 2025-06-05 11:00 (+15d) |  | 24.88d → 14d |  |  |
| 181 | **Integrate System** | 2025-05-19 09:00 → 2025-06-03 08:00 (+15d) | 2025-05-20 17:00 → 2025-06-04 16:00 (+15d) |  | 22.25d → 11.38d |  |  |
| 182 | **Perform Subsystem Assembly Design** | 2025-05-19 09:00 → 2025-06-03 08:00 (+15d) | 2025-05-20 09:00 → 2025-06-03 17:00 (+14d) |  | 22.25d → 11.38d |  |  |
| 183 | Design System Configuration | 2025-05-19 09:00 → 2025-06-03 08:00 (+15d) | 2025-05-19 15:00 → 2025-06-03 14:00 (+15d) |  | 22.25d → 11.38d |  |  |
| 184 | Design System Assembly Process | 2025-05-19 15:00 → 2025-06-03 14:00 (+15d) | 2025-05-20 09:00 → 2025-06-03 17:00 (+14d) |  | 22.25d → 11.38d |  |  |
| 185 | **Integrate Subsystems** | 2025-05-20 09:00 → 2025-06-04 08:00 (+15d) | 2025-05-20 17:00 → 2025-06-04 16:00 (+15d) |  | 22.25d → 11.38d |  |  |
| 186 | Design Aerodynamic Integration | 2025-05-20 09:00 → 2025-06-04 08:00 (+15d) | 2025-05-20 11:00 → 2025-06-04 10:00 (+15d) |  | 22.25d → 11.38d |  |  |
| 187 | Design EPS Integration | 2025-05-20 11:00 → 2025-06-04 10:00 (+15d) | 2025-05-20 12:00 → 2025-06-04 11:00 (+15d) |  | 22.25d → 11.38d |  |  |
| 188 | Design Structural Integration | 2025-05-20 13:00 → 2025-06-04 11:00 (+15d) | 2025-05-20 14:00 → 2025-06-04 12:00 (+15d) |  | 22.25d → 11.38d |  |  |
| 189 | Design Propulsion & Control Integration | 2025-05-20 14:00 → 2025-06-04 13:00 (+15d) | 2025-05-20 17:00 → 2025-06-04 16:00 (+15d) |  | 22.25d → 11.38d |  |  |
| 190 | **Simulate System** | 2025-05-15 09:00 → 2025-05-30 08:00 (+15d) | 2025-05-22 16:00 → 2025-06-06 15:00 (+15d) |  | 22.88d → 12d |  |  |
| 191 | **Simulate and Analyse** | 2025-05-21 08:00 → 2025-06-04 16:00 (+14d) | 2025-05-22 16:00 → 2025-06-06 15:00 (+15d) |  | 22.25d → 11.38d |  |  |

| ID | Task | Start | Finish | Duration | Complete | Total float | Predecessors | Other |
| --- | --- | --- | --- | --- | --- | --- | --- | --- |
| 192 | Analyse Swarm Performance | 2025-05-21 08:00 → 2025-06-04 16:00 (+14d) | 2025-05-21 12:00 → 2025-06-05 11:00 (+15d) |  |  | 22.25d → 11.38d |  |  |
| 193 | Analyse Flight Performance | 2025-05-21 13:00 → 2025-06-05 11:00 (+15d) | 2025-05-22 11:00 → 2025-06-06 10:00 (+15d) |  |  | 22.25d → 11.38d |  |  |
| 194 | Analyse Sensor Performance | 2025-05-22 11:00 → 2025-06-06 10:00 (+15d) | 2025-05-22 16:00 → 2025-06-06 15:00 (+15d) |  |  | 22.25d → 11.38d |  |  |
| 195 | **Extend Simulation** | 2025-05-15 09:00 → 2025-05-30 08:00 (+15d) | 2025-05-20 16:00 → 2025-06-04 15:00 (+15d) |  |  | 24.88d → 14d |  |  |
| 196 | Model Iteration | 2025-05-15 09:00 → 2025-05-30 08:00 (+15d) | 2025-05-16 11:00 → 2025-06-02 10:00 (+17d) |  |  | 24.88d → 14d |  |  |
| 197 | Extend Simulation with Swarming | 2025-05-16 11:00 → 2025-06-02 10:00 (+17d) | 2025-05-19 14:00 → 2025-06-03 12:00 (+15d) |  |  | 24.88d → 14d |  |  |
| 198 | Integration of Submodels | 2025-05-19 14:00 → 2025-06-03 13:00 (+15d) | 2025-05-20 16:00 → 2025-06-04 15:00 (+15d) |  |  | 24.88d → 14d |  |  |
| 199 | **Final Phase** | 2025-05-26 09:00 → 2025-06-10 08:00 (+15d) | 2025-06-20 12:00 → 2025-06-23 13:30 (+3d) | 19.38d → 9.56d |  | 4.5d → 3.44d |  |  |
| 200 | **Final Report** | 2025-05-26 09:00 → 2025-06-10 08:00 (+15d) | 2025-06-20 12:00 → 2025-06-23 13:30 (+3d) | 19.38d → 9.56d |  | 4.5d → 3.44d |  |  |
| 201 | **Draft Final Report** | 2025-05-26 09:00 → 2025-06-10 08:00 (+15d) | 2025-06-20 12:00 → 2025-06-23 13:30 (+3d) | 19.38d → 9.56d |  | 4.5d → 3.44d |  |  |
| 202 | Proofread Final Report | 2025-05-26 09:00 → 2025-06-10 08:00 (+15d) | 2025-05-26 14:00 → 2025-06-10 12:00 (+15d) |  |  | 23.38d → 12.5d |  |  |
| 203 | Implement Feedback | 2025-06-20 08:00 → 2025-06-23 08:30 (+3d) | 2025-06-20 12:00 → 2025-06-23 13:30 (+3d) |  |  | 4.5d → 3.44d |  |  |
| 204 | Draft Jury Summary | 2025-05-26 09:00 → 2025-06-10 08:00 (+15d) | 2025-05-27 09:00 → 2025-06-10 17:00 (+14d) |  |  | 22.88d → 12d |  |  |
| 205 | **Prepare Final Review** | 2025-05-26 09:00 → 2025-06-10 08:00 (+15d) | 2025-05-27 09:00 → 2025-06-10 17:00 (+14d) |  |  | 22.88d → 12d |  |  |
| 206 | Create Presentation | 2025-05-26 09:00 → 2025-06-10 08:00 (+15d) | 2025-05-26 15:00 → 2025-06-10 14:00 (+15d) |  |  | 22.88d → 12d |  |  |
| 207 | Practice Presentation | 2025-05-26 15:00 → 2025-06-10 14:00 (+15d) | 2025-05-27 09:00 → 2025-06-10 17:00 (+14d) |  |  | 22.88d → 12d |  |  |
| 208 | **Symposium** | 2025-05-26 09:00 → 2025-06-10 08:00 (+15d) | 2025-05-27 15:00 → 2025-06-11 14:00 (+15d) |  |  | 22.25d → 11.38d |  |  |
| 209 | Create Poster | 2025-05-26 09:00 → 2025-06-10 08:00 (+15d) | 2025-05-27 15:00 → 2025-06-11 14:00 (+15d) |  |  | 22.25d → 11.38d |  |  |
| 210 | Draft Red Booklet Summary | 2025-05-26 09:00 → 2025-06-10 08:00 (+15d) | 2025-05-27 09:00 → 2025-06-10 17:00 (+14d) |  |  | 22.88d → 12d |  |  |
| 211 | Prepare Symposium Presentation | 2025-05-26 09:00 → 2025-06-10 08:00 (+15d) | 2025-05-27 09:00 → 2025-06-10 17:00 (+14d) |  |  | 22.88d → 12d |  |  |
| 212 | **Concept Phase** | 2025-04-28 13:00 → 2025-04-28 08:00 A | 2025-05-01 13:30 → 2025-05-07 10:30 (+6d) | 3.06d → 7.31d | 0% → 15% | 22.25d → 13.69d | 2 → 24 |  |
| 213 | **Product and Project Scoping** | 2025-04-28 13:00 → 2025-04-28 08:00 A | 2025-04-28 15:54 → 2025-04-28 10:54 |  | 0% → 50% | 24.95d → 20.64d |  |  |
| 214 | Establish Project Objectives | 2025-04-28 13:00 → 2025-04-28 08:00 A | 2025-04-28 13:30 → 2025-04-28 08:30 A |  | 0% → 100% | 25.06d → none |  |  |
| 215 | **Perform Market Analysis** | 2025-04-28 13:30 → 2025-04-28 08:30 A | 2025-04-28 15:00 → 2025-04-28 10:00 A |  | 0% → 100% | 25.06d → none |  |  |
| 216 | Analyze Existing Solutions & Market Needs | 2025-04-28 13:30 → 2025-04-28 08:30 A | 2025-04-28 14:30 → 2025-04-28 09:30 A |  | 0% → 100% | 25.06d → none |  | resources none → TS |
| 217 | Perform SWOT of Prouduct on Market | 2025-04-28 14:30 → 2025-04-28 09:30 A | 2025-04-28 15:00 → 2025-04-28 10:00 A |  | 0% → 100% | 25.06d → none |  | resources none → TS |
| 218 | Resource Allocation & Budget Breakdown | 2025-04-28 13:30 → 2025-04-28 08:30 A | 2025-04-28 15:00 → 2025-04-28 10:00 |  | 0% → 50% | 25.06d → 20.75d |  |  |
| 219 | **Develop Risk Assessment** | 2025-04-28 13:30 → 2025-04-28 08:30 A | 2025-04-28 15:54 → 2025-04-28 10:54 |  | 0% → 50% | 24.95d → 20.64d |  |  |
| 220 | Technical Risk Assessment | 2025-04-28 13:30 → 2025-04-28 08:30 A | 2025-04-28 14:42 → 2025-04-28 09:42 |  | 0% → 50% | 24.95d → 0.07d |  | resources none → JQ |
| 221 | Contingency Management | 2025-04-28 14:42 → 2025-04-28 09:42 A | 2025-04-28 15:54 → 2025-04-28 10:54 |  | 0% → 50% | 24.95d → 20.64d |  | resources none → JQ |
| 222 | Develop Sustainable Development Approach | 2025-04-28 13:30 → 2025-04-28 08:30 | 2025-04-28 15:30 → 2025-04-28 10:30 |  |  | 25d → 20.69d |  |  |
| 223 | **Literature Study** | 2025-04-28 13:00 → 2025-04-28 08:00 A | 2025-04-28 16:00 → 2025-04-28 11:00 |  | 0% → 15% | 22.25d → 0d |  |  |
| 224 | **Conduct Research on Relevant Topics** | 2025-04-28 13:00 → 2025-04-28 08:00 A | 2025-04-28 14:00 → 2025-04-28 09:00 |  | 0% → 25% | 22.25d → 0.25d |  |  |
| 225 | Research Aerodynamic Phenomena | 2025-04-28 13:00 → 2025-04-28 08:00 A | 2025-04-28 14:00 → 2025-04-28 09:00 |  | 0% → 25% | 22.25d → 0.25d |  | resources none → JFM |
| 226 | Research Stability & Control Characteristics | 2025-04-28 13:00 → 2025-04-28 08:00 A | 2025-04-28 14:00 → 2025-04-28 09:00 |  | 0% → 25% | 22.5d → 0.25d |  | resources none → JFM |
| 227 | Research Propulsion & Power Options | 2025-04-28 13:00 → 2025-04-28 08:00 A | 2025-04-28 14:00 → 2025-04-28 09:00 |  | 0% → 25% | 22.5d → 0.25d |  | resources none → JFM |
| 228 | Research Structure & Materials of Similar Products | 2025-04-28 13:00 → 2025-04-28 08:00 A | 2025-04-28 13:30 → 2025-04-28 08:30 |  | 0% → 25% | 22.56d → 0.31d |  | resources none → JFM |
| 229 | Begin Initial Swarming Research | 2025-04-28 13:00 → 2025-04-28 08:00 A | 2025-04-28 13:30 → 2025-04-28 08:30 |  | 0% → 25% | 22.25d → 0d |  | resources none → JFM |
| 230 | **Review Literature with Teammates** | 2025-04-28 13:30 → 2025-04-28 08:30 | 2025-04-28 14:30 → 2025-04-28 09:30 |  |  | 22.25d → 0d |  |  |
| 231 | Present Findings with Teammates | 2025-04-28 13:30 → 2025-04-28 08:30 | 2025-04-28 14:00 → 2025-04-28 09:00 |  |  | 22.25d → 0d |  | resources none → IPD |
| 232 | Combine & Refine Findings | 2025-04-28 14:00 → 2025-04-28 09:00 | 2025-04-28 14:30 → 2025-04-28 09:30 |  |  | 22.25d → 0d |  | resources none → IPD |
| 233 | **Draft Literature Study** | 2025-04-28 14:30 → 2025-04-28 09:30 | 2025-04-28 16:00 → 2025-04-28 11:00 |  |  | 22.25d → 0d |  |  |
| 234 | Write Literature Study | 2025-04-28 14:30 → 2025-04-28 09:30 | 2025-04-28 15:30 → 2025-04-28 10:30 |  |  | 22.25d → 0d |  | resources none → RV |
| 235 | Review & Quality Control | 2025-04-28 15:30 → 2025-04-28 10:30 | 2025-04-28 16:00 → 2025-04-28 11:00 |  |  | 22.25d → 0d |  | resources none → RV |
| 236 | **Requirement Analysis** | 2025-04-28 16:00 → 2025-04-28 11:00 A | 2025-04-29 11:00 → 2025-04-28 17:00 (-1d) | 0.5d → 0.62d | 0% → 76% | 22.25d → 2.75d |  | resources none → RV |
| 237 | **Review Stakeholder Requirements & Constraints** | 2025-04-28 16:00 → 2025-04-28 11:00 A | 2025-04-28 17:00 → 2025-04-28 12:00 | 0.12d → 1h | 0% → 99% | 22.25d → none |  |  |
| 238 | Review User-/Top-Level Requirements and Constraints | 2025-04-28 16:00 → 2025-04-28 11:00 A | 2025-04-28 16:30 → 2025-04-28 11:30 A |  | 0% → 100% | 22.25d → none |  | resources none → TK |
| 239 | Identify Driving Requirements and Constraints | 2025-04-28 16:00 → 2025-04-28 11:00 A | 2025-04-28 16:30 → 2025-04-28 11:30 A |  | 0% → 100% | 22.25d → none |  | resources none → TK |
| 240 | Assess Feasibility of Requirements and Constraints | 2025-04-28 16:30 → 2025-04-28 11:30 A | 2025-04-28 17:00 → 2025-04-28 12:00 A |  | 0% → 100% | 22.25d → none |  | resources none → TK |
| 241 | **Break Down Requirements** | 2025-04-29 08:00 → 2025-04-28 13:00 A (-1d) | 2025-04-29 11:00 → 2025-04-28 17:00 (-1d) | 0.38d → 0.5d | 0% → 88% | 22.25d → 2.75d |  |  |
| 242 | Create Requirement Discovery Tree | 2025-04-29 08:00 → 2025-04-28 13:00 A (-1d) | 2025-04-29 11:00 → 2025-04-28 17:00 (-1d) | 3h → 4h | 0% → 75% | 22.25d → 2.75d |  | resources none → KS |
| 243 | Determine System Requirements | 2025-04-29 08:00 → 2025-04-28 13:00 A (-1d) | 2025-04-29 09:30 → 2025-04-28 15:00 A (-1d) | 1.5h → 2h | 0% → 100% | 22.25d → none |  | resources none → KS |
| 244 | Determine Subsystem Requirements | 2025-04-29 09:30 → 2025-04-28 15:00 A (-1d) | 2025-04-29 11:00 → 2025-04-28 17:00 A (-1d) | 1.5h → 2h | 0% → 100% | 22.25d → none |  | resources none → KS |
| 245 | **Map System Functions** | 2025-04-29 08:00 → 2025-04-28 13:00 A (-1d) | 2025-04-29 10:30 → 2025-04-28 15:30 (-1d) |  | 0% → 25% | 22.31d → 2.94d |  |  |
| 246 | Create Functional Flow Diagram | 2025-04-29 08:00 → 2025-04-28 13:00 A (-1d) | 2025-04-29 09:15 → 2025-04-28 14:15 (-1d) |  | 0% → 25% | 22.31d → 0.04d |  | resources none → DvdP |
| 247 | Create Functional Breakdown Diagram | 2025-04-29 09:15 → 2025-04-28 14:15 A (-1d) | 2025-04-29 10:30 → 2025-04-28 15:30 (-1d) |  | 0% → 25% | 22.31d → 2.94d |  | resources none → DvdP |
| 248 | **Simulation Setup** | 2025-04-28 16:00 → 2025-04-28 11:00 A | 2025-04-29 10:30 → 2025-05-02 11:00 (+3d) | 0.44d → 4d | 0% → 8% | 24.5d → 16.62d |  | resources none → DvdP |
| 249 | Define Simulation Goals | 2025-04-28 16:00 → 2025-04-28 11:00 A | 2025-04-28 16:24 → 2025-04-28 16:00 A | 0.4h → 4h | 0% → 100% | 24.5d → none |  |  |
| 250 | **Create Simulation Basis** | 2025-04-28 16:24 → 2025-04-28 16:00 A | 2025-04-28 17:00 → 2025-04-29 10:00 (+1d) | 0.07d → 0.38d | 0% → 25% | 24.5d → 16.62d |  |  |
| 251 | Select Simulation Tools | 2025-04-28 16:24 → 2025-04-28 16:00 A | 2025-04-28 16:36 → 2025-04-28 17:00 | 0.2h → 1h | 0% → 25% | 24.5d → 0.05d |  | resources none → KS |
| 252 | Set Up Simulation Environment | 2025-04-28 16:36 → 2025-04-29 08:00 A (+1d) | 2025-04-28 16:54 → 2025-04-29 09:30 (+1d) | 0.3h → 1.5h | 0% → 25% | 24.5d → 0.02d |  | resources none → KS |
| 253 | Document Assumptions | 2025-04-28 16:54 → 2025-04-29 09:30 A (+1d) | 2025-04-28 17:00 → 2025-04-29 10:00 (+1d) | 0.1h → 0.5h | 0% → 25% | 24.5d → 16.62d |  | resources none → KS |
| 254 | **Develop Preliminary Aerodynamics Simulation** | 2025-04-29 08:00 → 2025-04-29 10:00 | 2025-04-29 10:30 → 2025-05-02 11:00 (+3d) | 0.31d → 3.12d |  | 24.5d → 16.62d |  |  |
| 255 | Build Simulation | 2025-04-29 08:00 → 2025-04-29 10:00 | 2025-04-29 09:30 → 2025-05-01 09:00 (+2d) | 1.5h → 15h |  | 24.5d → 16.62d |  | resources none → TK |
| 256 | Run Baseline Tests | 2025-04-29 09:30 → 2025-05-01 09:00 (+2d) | 2025-04-29 10:00 → 2025-05-01 15:00 (+2d) | 0.5h → 5h |  | 24.5d → 16.62d |  | resources none → TK |
| 257 | Analyze Basic Results | 2025-04-29 10:00 → 2025-05-01 15:00 (+2d) | 2025-04-29 10:30 → 2025-05-02 11:00 (+3d) | 0.5h → 5h |  | 24.5d → 16.62d |  | resources none → TK |
| 258 | **Develop Preliminary Dynamics Simulation** | 2025-04-29 08:00 → 2025-04-29 10:00 | 2025-04-29 10:30 → 2025-05-02 11:00 (+3d) | 0.31d → 3.12d |  | 24.5d → 16.62d |  |  |
| 259 | Build Simulation | 2025-04-29 08:00 → 2025-04-29 10:00 | 2025-04-29 09:30 → 2025-05-01 09:00 (+2d) | 1.5h → 15h |  | 24.5d → 16.62d |  | resources none → IPD |
| 260 | Run Baseline Tests | 2025-04-29 09:30 → 2025-05-01 09:00 (+2d) | 2025-04-29 10:00 → 2025-05-01 15:00 (+2d) | 0.5h → 5h |  | 24.5d → 16.62d |  | resources none → IPD |
| 261 | Analyze Basic Results | 2025-04-29 10:00 → 2025-05-01 15:00 (+2d) | 2025-04-29 10:30 → 2025-05-02 11:00 (+3d) | 0.5h → 5h |  | 24.5d → 16.62d |  | resources none → IPD |

| ID | Task | Start | Finish | Duration | Total float | Predecessors | Other |
| --- | --- | --- | --- | --- | --- | --- | --- |
| 262 | **Concept Generation** | 2025-04-29 11:00 → 2025-04-29 08:00 | 2025-04-30 10:30 → 2025-04-30 10:00 | 0.94d → 1.25d | 22.25d → 2.75d |  |  |
| 263 | **Brainstorm Subsystem Architecture Ideas** | 2025-04-29 11:00 → 2025-04-29 08:00 | 2025-04-29 14:30 → 2025-04-29 11:07 | 0.31d → 0.39d | 22.25d → 2.75d |  |  |
| 264 | Control & Stability Subsystem | 2025-04-29 11:00 → 2025-04-29 08:00 | 2025-04-29 14:30 → 2025-04-29 11:07 | 2.5h → 3.13h | 22.25d → 2.75d |  | resources none → MS |
| 265 | Aerodynamics Subsystem | 2025-04-29 11:00 → 2025-04-29 08:00 | 2025-04-29 14:30 → 2025-04-29 11:07 | 2.5h → 3.13h | 22.25d → 2.75d |  | resources none → MS |
| 266 | Power & Propulsion Subsystem | 2025-04-29 11:00 → 2025-04-29 08:00 | 2025-04-29 14:30 → 2025-04-29 11:07 | 2.5h → 3.13h | 22.25d → 2.75d |  | resources none → MS |
| 267 | Structures & Materials Subsystem | 2025-04-29 11:00 → 2025-04-29 08:00 | 2025-04-29 14:30 → 2025-04-29 11:07 | 2.5h → 3.13h | 22.25d → 2.75d |  | resources none → MS |
| 268 | **Define System Architecture Concepts** | 2025-04-29 14:30 → 2025-04-29 11:07 | 2025-04-29 17:00 → 2025-04-29 15:15 | 0.31d → 0.39d | 22.25d → 2.75d |  |  |
| 269 | Integrate Subsystem Ideas | 2025-04-29 14:30 → 2025-04-29 11:07 | 2025-04-29 15:30 → 2025-04-29 13:07 |  | 22.25d → 2.75d |  | resources none → RV |
| 270 | Define and Sketch Systems | 2025-04-29 15:30 → 2025-04-29 13:07 | 2025-04-29 16:00 → 2025-04-29 14:07 | 0.5h → 1h | 22.25d → 2.75d |  | resources none → RV |
| 271 | Generate Concepts | 2025-04-29 16:00 → 2025-04-29 14:07 | 2025-04-29 17:00 → 2025-04-29 15:15 | 1h → 1.13h | 22.25d → 2.75d |  | resources none → RV |
| 272 | **Select Concepts** | 2025-04-30 08:00 → 2025-04-29 15:15 (-1d) | 2025-04-30 10:30 → 2025-04-30 10:00 | 0.31d → 0.47d | 22.25d → 2.75d |  |  |
| 273 | Generate Design Option Tree | 2025-04-30 08:00 → 2025-04-29 15:15 (-1d) | 2025-04-30 09:00 → 2025-04-29 16:15 (-1d) |  | 22.25d → 2.75d |  | resources none → TS |
| 274 | Assess Feasibility | 2025-04-30 09:00 → 2025-04-29 16:15 (-1d) | 2025-04-30 09:15 → 2025-04-30 08:15 | 0.25h → 1h | 22.25d → 2.75d |  | resources none → TS |
| 275 | Select Initial Decision Criteria | 2025-04-30 09:15 → 2025-04-30 08:15 | 2025-04-30 10:15 → 2025-04-30 09:15 |  | 22.25d → 2.75d |  | resources none → TS |
| 276 | Select 3 Concepts | 2025-04-30 10:15 → 2025-04-30 09:15 | 2025-04-30 10:30 → 2025-04-30 10:00 | 0.25h → 0.75h | 22.25d → 2.75d |  | resources none → TS |
| 277 | **Review and Reporting** | 2025-04-30 10:30 → 2025-04-30 10:00 | 2025-05-01 13:30 → 2025-05-07 10:30 (+6d) | 1.25d → 5.06d | 22.25d → 2.75d |  | resources none → JQ |
| 278 | **Draft Executive Overview** | 2025-04-30 10:30 → 2025-04-30 10:00 | 2025-04-30 10:54 → 2025-04-30 15:00 | 0.05d → 0.5d | 22.25d → 18.25d |  |  |
| 279 | Write Executive Overview | 2025-04-30 10:30 → 2025-04-30 10:00 | 2025-04-30 10:48 → 2025-04-30 14:00 | 0.3h → 3h | 22.25d → 18.25d |  | resources none → JQ |
| 280 | Review and Quality Control | 2025-04-30 10:48 → 2025-04-30 14:00 | 2025-04-30 10:54 → 2025-04-30 15:00 | 0.1h → 1h | 22.25d → 18.25d |  | resources none → JQ |
| 281 | **Draft Baseline Report** | 2025-04-30 10:54 → 2025-04-30 10:00 | 2025-04-30 16:54 → 2025-05-02 17:15 (+2d) | 0.62d → 2.75d | 22.25d → 2.75d | 278 → 278SS |  |
| 282 | Write Baseline Report | 2025-04-30 10:54 → 2025-04-30 10:00 | 2025-04-30 15:54 → 2025-05-01 10:00 (+1d) | 4h → 8h | 22.25d → 17.5d |  | resources none → RV |
| 283 | Review and Quality Control | 2025-04-30 15:54 → 2025-05-01 10:00 (+1d) | 2025-04-30 16:54 → 2025-05-01 13:00 (+1d) | 1h → 2h | 22.25d → 17.5d |  | resources none → RV |
| 285 | Organize Baseline Review | 2025-04-30 16:54 → 2025-05-05 08:00 (+5d) | 2025-05-01 10:54 → 2025-05-05 16:30 (+4d) | 3h → 7.5h | 22.25d → 15.06d | 281 → 284 |  |
| 286 | **Perform Peer Review** | 2025-05-01 10:54 → 2025-05-05 08:00 (+4d) | 2025-05-01 13:30 → 2025-05-05 10:00 (+4d) | 0.2d → 0.25d | 22.25d → 15.75d | 285 → 284 |  |
| 287 | Review other Groups | 2025-05-01 10:54 → 2025-05-05 08:00 (+4d) | 2025-05-01 11:54 → 2025-05-05 09:00 (+4d) |  | 22.25d → 15.75d |  | resources none → ALL |
| 288 | Implement Own Feedback | 2025-05-01 11:54 → 2025-05-05 09:00 (+4d) | 2025-05-01 13:30 → 2025-05-05 10:00 (+4d) | 0.6h → 1h | 22.25d → 15.75d |  | resources none → ALL |
| 289 | Baseline Review | 2025-05-02 08:00 → 2025-05-07 08:30 (+5d) | 2025-05-02 08:00 → 2025-05-07 10:30 (+5d) | 0h → 2h | none → 0.69d |  | constraint none → start no earlier than 2025-05-07 08:30; resources none → ALL |
| 290 | Final Review | 2025-06-20 08:00 → 2025-06-23 08:30 (+3d) | 2025-06-20 08:00 → 2025-06-23 08:30 (+3d) |  |  |  |  |
